# Website Example

Schedule from MS Project XML, 2019-01-01 to 2020-10-30, status date 2020-04-17, costs in $, A marks actual dates.

## Calendars

- Standard: Mon-Fri 08:00-12:00, 13:00-17:00; Sat-Sun off.

## Resources

| Resource | Rate |
| --- | --- |
| Toby Arnott | 100 |
| Contract Consultant | 200 |
| Northern Farm Foods | 75 |
| Bakersfield Associates | 100 |
| Adrian Nasgill | 100 |
| People 4 People | 200 |
| Mark Ravensville | 50 |
| Lorraine Research | 125 |

## Schedule

| ID | WBS | Task | Type | Duration | Start | Finish | Predecessors | Complete | Remaining | Baseline start | Baseline finish | Baseline duration | Total slack | Constraint | Resources | Work | Actual work | Cost | Baseline cost | Actual cost |
| --- | --- | --- | --- | --- | --- | --- | --- | --- | --- | --- | --- | --- | --- | --- | --- | --- | --- | --- | --- | --- |
| 1 | 1 | **Northern Farm Foods Web Site 2019** |  | 478.5d | 2019-01-01 A | 2020-10-30 |  | 66% | 161.43d | 2019-01-01 | 2020-07-17 | 403.5d | 0d |  |  | 5244h | 4128h | 599,700 | 517,500 | 478,400 |
| 2 | 1.1 | Tendering Process & Contract |  | 50d | 2019-01-01 A | 2019-03-11 A |  | 100% |  | 2019-01-01 | 2019-03-11 | 50d |  | start no earlier than 2019-01-01 | Toby Arnott; Contract Consultant | 800h | 800h | 120,000 | 120,000 | 120,000 |
| 3 | 1.2 | **Requirements** |  | 65d | 2019-03-14 A | 2019-06-12 A |  | 100% |  | 2019-03-12 | 2019-06-10 | 65d |  |  |  | 1040h | 1040h | 91,000 | 91,000 | 91,000 |
| 4 | 1.2.1 | Requirements Definition |  | 65d | 2019-03-14 A | 2019-06-12 A | 2 | 100% |  | 2019-03-12 | 2019-06-10 | 65d |  | finish no earlier than 2019-06-12 | Northern Farm Foods; Toby Arnott | 1040h | 1040h | 91,000 | 91,000 | 91,000 |
| 5 | 1.2.2 | Requirements Signoff | milestone | 0d | 2019-06-12 A | 2019-06-12 A | 4 | 100% |  | 2019-06-10 | 2019-06-10 | 0d |  |  |  |  |  |  |  |  |
| 6 | 1.3 | **Design & Development** |  | 227d | 2019-01-01 A | 2019-11-13 A |  | 100% |  | 2019-01-01 | 2019-11-13 | 227d |  |  |  | 2104h | 2104h | 249,000 | 249,000 | 249,000 |
| 7 | 1.3.1 | **Analysis & Design** |  | 51d | 2019-06-14 A | 2019-08-23 A |  | 100% |  | 2019-06-11 | 2019-08-20 | 51d |  |  |  | 1224h | 1224h | 153,000 | 153,000 | 153,000 |
| 8 | 1.3.1.1 | Analysis and Design |  | 51d | 2019-06-14 A | 2019-08-23 A | 5 | 100% |  | 2019-06-11 | 2019-08-20 | 51d |  | finish no earlier than 2019-08-23 | Northern Farm Foods; Bakersfield Associates; Contract Consultant | 1224h | 1224h | 153,000 | 153,000 | 153,000 |
| 9 | 1.3.1.2 | Design Signoff | milestone | 0d | 2019-08-23 A | 2019-08-23 A | 8 | 100% |  | 2019-08-20 | 2019-08-20 | 0d |  |  |  |  |  |  |  |  |
| 10 | 1.3.2 | **Development** |  | 227d | 2019-01-01 A | 2019-11-13 A |  | 100% |  | 2019-01-01 | 2019-11-13 | 227d |  |  |  | 880h | 880h | 96,000 | 96,000 | 96,000 |
| 11 | 1.3.2.1 | Graphical Resources and Branding |  | 30d | 2019-08-26 A | 2019-10-04 A | 9 | 100% |  | 2019-08-21 | 2019-10-01 | 30d |  |  | Bakersfield Associates | 240h | 240h | 24,000 | 24,000 | 24,000 |
| 12 | 1.3.2.2 | Database Implementation |  | 25d | 2019-10-10 A | 2019-11-13 A |  | 100% |  | 2019-10-10 | 2019-11-13 | 25d |  | start no earlier than 2019-10-10 | Adrian Nasgill; People 4 People | 400h | 400h | 60,000 | 60,000 | 60,000 |
| 13 | 1.3.2.3 | HTML, etc |  | 30d | 2019-01-01 A | 2019-02-11 A |  | 100% |  | 2019-01-01 | 2019-02-11 | 30d |  |  | Mark Ravensville | 240h | 240h | 12,000 | 12,000 | 12,000 |
| 14 | 1.4 | **Testing** |  | 151.5d | 2020-03-18 A | 2020-10-15 |  | 15% | 128.5d | 2020-03-18 | 2020-07-03 | 77.5d | 0d |  |  | 1212h | 184h | 128,700 | 57,500 | 18,400 |
| 15 | 1.4.1 | Test Script |  | 98d | 2020-03-18 A | 2020-07-31 |  | 23% | 75d | 2020-03-18 | 2020-04-21 | 25d | 0d | finish no earlier than 2020-07-31 | Toby Arnott | 784h | 184h | 78,400 | 20,000 | 18,400 |
| 16 | 1.4.2 | Testing |  | 37.5d | 2020-08-03 | 2020-09-23 | 15 |  |  | 2020-04-22 | 2020-06-12 | 37.5d | 0d |  | Lorraine Research | 300h |  | 37,500 | 37,500 |  |
| 17 | 1.4.3 | User Testing |  | 15d | 2020-09-23 | 2020-10-14 | 16 |  |  | 2020-06-12 | 2020-07-03 | 15d | 0d |  | Toby Arnott | 120h |  | 12,000 |  |  |
| 18 | 1.4.4 | Acceptance |  | 1d | 2020-10-14 | 2020-10-15 | 17 |  |  | 2020-07-03 | 2020-07-03 | 0d | 0d |  | Toby Arnott | 8h |  | 800 |  |  |
| 19 | 1.5 | Live Implementation |  | 10d | 2020-10-15 | 2020-10-29 | 18 |  |  | 2020-07-03 | 2020-07-17 | 10d | 0d |  | Lorraine Research | 80h |  | 10,000 |  |  |
| 20 | 1.6 | Go Live |  | 1d | 2020-10-29 | 2020-10-30 | 19 |  |  | 2020-07-17 | 2020-07-17 | 0d | 0d |  | Lorraine Research | 8h |  | 1,000 |  |  |
