# Website Example

Schedule from MS Project XML, 2019-01-01 to 2020-08-07, status date 2020-04-03, costs in $, A marks actual dates.

## Calendars

- Standard: Mon-Fri 08:00-12:00, 13:00-17:00; Sat-Sun off.

## Resources

| Resource | Rate |
| --- | --- |
| Toby Arnott | 100 |
| Contract Consultant | 200 |
| Northern Farm Foods | 75 |
| Bakersfield Associates | 100 |
| Adrian Nasgill | 100 |
| People 4 People | 200 |
| Mark Ravensville | 50 |
| Lorraine Research | 125 |

## Schedule

| ID | WBS | Task | Type | Duration | Start | Finish | Predecessors | Complete | Remaining | Baseline start | Baseline finish | Baseline duration | Total slack | Constraint | Resources | Work | Actual work | Cost | Baseline cost | Actual cost |
| --- | --- | --- | --- | --- | --- | --- | --- | --- | --- | --- | --- | --- | --- | --- | --- | --- | --- | --- | --- | --- |
| 1 | 1 | **Northern Farm Foods Web Site 2019** |  | 419d | 2019-01-01 A | 2020-08-07 |  | 82% | 73.98d | 2019-01-01 | 2020-07-17 | 403.5d | 0d |  |  | 4594h | 4294h | 479,500 | 517,500 | 442,000 |
| 2 | 1.1 | Tendering Process & Contract |  | 50d | 2019-01-01 A | 2019-03-11 A |  | 100% |  | 2019-01-01 | 2019-03-11 | 50d |  | start no earlier than 2019-01-01 | Toby Arnott; Contract Consultant | 800h | 800h | 140,000 | 120,000 | 140,000 |
| 3 | 1.2 | **Requirements** |  | 65d | 2019-03-14 A | 2019-06-12 A |  | 100% |  | 2019-03-12 | 2019-06-10 | 65d |  |  |  | 1040h | 1040h | 95,000 | 91,000 | 95,000 |
| 4 | 1.2.1 | Requirements Definition |  | 65d | 2019-03-14 A | 2019-06-12 A | 2 | 100% |  | 2019-03-12 | 2019-06-10 | 65d |  | finish no earlier than 2019-06-12 | Northern Farm Foods; Toby Arnott | 1040h | 1040h | 95,000 | 91,000 | 95,000 |
| 5 | 1.2.2 | Requirements Signoff | milestone | 0d | 2019-06-12 A | 2019-06-12 A | 4 | 100% |  | 2019-06-10 | 2019-06-10 |  |  |  |  |  |  |  |  |  |
| 6 | 1.3 | **Design & Development** |  | 227d | 2019-01-01 A | 2019-11-13 A |  | 100% |  | 2019-01-01 | 2019-11-13 | 227d |  |  |  | 2104h | 2104h | 186,000 | 249,000 | 186,000 |
| 7 | 1.3.1 | **Analysis & Design** |  | 51d | 2019-06-14 A | 2019-08-23 A |  | 100% |  | 2019-06-11 | 2019-08-20 | 51d |  |  |  | 1224h | 1224h | 160,000 | 153,000 | 160,000 |
| 8 | 1.3.1.1 | Analysis and Design |  | 51d | 2019-06-14 A | 2019-08-23 A | 5 | 100% |  | 2019-06-11 | 2019-08-20 | 51d |  | finish no earlier than 2019-08-23 | Northern Farm Foods; Bakersfield Associates; Contract Consultant | 1224h | 1224h | 160,000 | 153,000 | 160,000 |
| 9 | 1.3.1.2 | Design Signoff | milestone | 0d | 2019-08-23 A | 2019-08-23 A | 8 | 100% |  | 2019-08-20 | 2019-08-20 |  |  |  |  |  |  |  |  |  |
| 10 | 1.3.2 | **Development** |  | 227d | 2019-01-01 A | 2019-11-13 A |  | 100% |  | 2019-01-01 | 2019-11-13 | 227d |  |  |  | 880h | 880h | 26,000 | 96,000 | 26,000 |
| 11 | 1.3.2.1 | Graphical Resources and Branding |  | 30d | 2019-08-26 A | 2019-10-04 A | 9 | 100% |  | 2019-08-21 | 2019-10-01 | 30d |  |  | Bakersfield Associates | 240h | 240h | 26,000 | 24,000 | 26,000 |
| 12 | 1.3.2.2 | Database Implementation |  | 25d | 2019-10-10 A | 2019-11-13 A |  | 100% |  | 2019-10-10 | 2019-11-13 | 25d |  | start no earlier than 2019-10-10 | Adrian Nasgill; People 4 People | 400h | 400h |  | 60,000 |  |
| 13 | 1.3.2.3 | HTML, etc |  | 30d | 2019-01-01 A | 2019-02-11 A |  | 100% |  | 2019-01-01 | 2019-02-11 | 30d |  |  | Mark Ravensville | 240h | 240h |  | 12,000 |  |
| 14 | 1.4 | **Testing** |  | 93d | 2020-03-18 A | 2020-07-24 |  | 44% | 52.5d | 2020-03-18 | 2020-07-03 | 77.5d | 0d |  |  | 650h | 350h | 58,500 | 57,500 | 21,000 |
| 15 | 1.4.1 | Test Script |  | 40.5d | 2020-03-18 A | 2020-05-13 A |  | 100% |  | 2020-03-18 | 2020-04-21 | 25d |  | start no earlier than 2020-03-18 | Toby Arnott | 350h | 350h | 21,000 | 20,000 | 21,000 |
| 16 | 1.4.2 | Testing |  | 37.5d | 2020-05-13 | 2020-07-03 | 15 |  |  | 2020-04-22 | 2020-06-12 | 37.5d | 0d |  | Lorraine Research | 300h |  | 37,500 | 37,500 |  |
| 17 | 1.4.3 | User Testing |  | 15d | 2020-07-06 | 2020-07-24 | 16 |  |  | 2020-06-12 | 2020-07-03 | 15d | 0d |  |  |  |  |  |  |  |
| 18 | 1.4.4 | Acceptance | milestone | 0d | 2020-07-24 | 2020-07-24 | 17 |  |  | 2020-07-03 | 2020-07-03 |  | 0d |  |  |  |  |  |  |  |
| 19 | 1.5 | Live Implementation |  | 10d | 2020-07-27 | 2020-08-07 | 18 |  |  | 2020-07-03 | 2020-07-17 | 10d | 0d |  |  |  |  |  |  |  |
| 20 | 1.6 | Go Live | milestone | 0d | 2020-08-07 | 2020-08-07 | 19 |  |  | 2020-07-17 | 2020-07-17 |  | 0d |  |  |  |  |  |  |  |
